# EDT - ANPAOCFAP

Schedule from MS Project, 2011-03-28 to 2011-12-05, A marks actual dates.
UPC

## Calendars

- Estándar: Mon-Fri 09:00-13:00, 15:00-19:00; Sat-Sun off.

## Schedule

| ID | WBS | Task | Type | Duration | Start | Finish | Predecessors | Complete | Remaining | Actual start | Constraint |
| --- | --- | --- | --- | --- | --- | --- | --- | --- | --- | --- | --- |
| 1 | 1 | **Arquitectura de Negocios y Propuesta de Automatización para la Oficina Central de Fe y Alegría** |  | 180.88d | 2011-03-28 | 2011-12-05 |  | 48% | 94.54d | 2011-03-30 |  |
| 2 | 1.1 | **Ciclo 2011 - I** |  | 73.88d | 2011-03-30 A | 2011-07-11 A |  | 100% |  |  |  |
| 3 | 1.1.1 | **Análisis de los Nuevos Procesos** |  | 2.88d | 2011-03-30 A | 2011-04-04 A |  | 100% |  |  |  |
| 4 | 1.1.1.1 | Estudio del Proyecto de Tesis "Modelo de Negocios Empresarial de la Oficina Central Fe y Alegría" | manual | 2.88d | 2011-03-30 A | 2011-04-04 A |  | 100% |  |  |  |
| 5 | 1.1.2 | Realización de Entrevistas con el Departamento de Administración | manual | 58.88d | 2011-04-05 A | 2011-06-24 A | 4 | 100% |  |  | start no earlier than 2011-04-05 |
| 6 | 1.1.3 | Presentación del Primer Avance del Proyecto | manual | 1d | 2011-04-18 A | 2011-04-18 A |  | 100% |  |  |  |
| 7 | 1.1.4 | Exposición del Primer Avance del Proyecto | manual | 1d | 2011-04-27 A | 2011-04-27 A | 6 | 100% |  |  |  |
| 8 | 1.1.5 | **Definición de los procesos (1)** |  | 9.88d | 2011-04-11 A | 2011-04-22 A |  | 100% |  |  |  |
| 9 | 1.1.5.1 | Macroproceso de Gestión de Obras Civiles | manual | 4.88d | 2011-04-11 A | 2011-04-15 A |  | 100% |  |  |  |
| 10 | 1.1.5.2 | Macroproceso de Gestión de Abastecimiento | manual | 4.88d | 2011-04-18 A | 2011-04-22 A | 9 | 100% |  |  |  |
| 11 | 1.1.6 | **Inspección de QA 1** |  | 10d | 2011-04-18 A | 2011-04-29 A |  | 100% |  |  |  |
| 12 | 1.1.6.1 | Inspección Paquete # 1 | manual | 10d | 2011-04-18 A | 2011-04-29 A |  | 100% |  |  |  |
| 13 | 1.1.7 | **Definición de los procesos (2)** |  | 19.88d | 2011-05-04 A | 2011-05-31 A |  | 100% |  |  |  |
| 14 | 1.1.7.1 | Macroproceso de Gestión de Control de Pagos | manual | 9.88d | 2011-05-04 A | 2011-05-17 A | 12 | 100% |  |  |  |
| 15 | 1.1.7.2 | Macroproceso de Contabilidad y Presupuestos | manual | 9.88d | 2011-05-18 A | 2011-05-31 A | 14 | 100% |  |  |  |
| 16 | 1.1.8 | **Inspección de QA 2** |  | 8.88d | 2011-06-01 | 2011-06-13 A |  | 100% |  | 2011-05-31 |  |
| 17 | 1.1.8.1 | Inspección Paquete # 2 | manual | 8.88d | 2011-05-31 A | 2011-06-13 A | 15 | 100% |  |  |  |
| 18 | 1.1.9 | **Aceptación del Cliente de los Macroprocesos** |  | 3.88d | 2011-06-14 A | 2011-06-17 A |  | 100% |  |  |  |
| 19 | 1.1.9.1 | Macroproceso de Gestión de Obras Civiles | manual | 3.88d | 2011-06-14 A | 2011-06-17 A | 17 | 100% |  |  |  |
| 20 | 1.1.9.2 | Macroproceso de Gestión de Abastecimiento | manual | 3.88d | 2011-06-14 A | 2011-06-17 A | 17 | 100% |  |  |  |
| 21 | 1.1.9.3 | Macroproceso de Gestión de Control de Pagos | manual | 3.88d | 2011-06-14 A | 2011-06-17 A | 17 | 100% |  |  |  |
| 22 | 1.1.9.4 | Macroproceso de Contabilidad y Presupuestos | manual | 3.88d | 2011-06-14 A | 2011-06-17 A | 17 | 100% |  |  |  |
| 23 | 1.1.10 | Elaboración de " Primera Versión de la Memoria del Proyecto " | manual | 11.12d | 2011-06-13 A | 2011-06-28 A | 17 | 100% |  |  |  |
| 24 | 1.1.11 | Presentación de la " Primera Versión de la Memoria del Proyecto " | manual | 1d | 2011-06-29 A | 2011-06-29 A | 23 | 100% |  |  |  |
| 25 | 1.1.12 | Exposición ” Primera Versión de la Memoria del Proyecto” | manual | 0.88d | 2011-07-11 A | 2011-07-11 A | 24 | 100% |  |  |  |

| ID | WBS | Task | Type | Duration | Start | Finish | Predecessors | Total slack |
| --- | --- | --- | --- | --- | --- | --- | --- | --- |
| 26 | 1.2 | **Ciclo 2011-II** |  | 80.88d | 2011-08-15 | 2011-12-05 |  |  |
| 27 | 1.2.1 | Elaboración del Plan de Trabajo Ciclo 2011-2 | manual | 1.88d | 2011-08-15 | 2011-08-16 |  |  |
| 28 | 1.2.2 | Entrega del Plan de Trabajo Ciclo 2011-2 | manual | 0.88d | 2011-08-17 | 2011-08-17 | 27 |  |
| 29 | 1.2.3 | **Definición de los procesos** |  | 9.75d | 2011-08-15 | 2011-08-26 |  | 0d |
| 30 | 1.2.3.1 | Macroproceso de Gestión de Recursos Humanos | manual | 4.88d | 2011-08-15 | 2011-08-19 |  |  |
| 31 | 1.2.3.2 | Macroproceso de Gestión de Educación Rural | manual | 4.88d | 2011-08-22 | 2011-08-26 | 30 |  |
| 32 | 1.2.4 | **Inspección QA 1** |  | 9.88d | 2011-08-29 | 2011-09-09 |  |  |
| 33 | 1.2.4.1 | Macroproceso de Gestión de Recursos Humanos y Gestión de Educación Rural | manual | 9.88d | 2011-08-29 | 2011-09-09 | 31 |  |
| 34 | 1.2.5 | Modificación Procesos del Macroproceso "Planificación" | manual | 4.88d | 2011-08-29 | 2011-09-02 | 31 |  |
| 35 | 1.2.6 | Modificación Procesos del Macroproceso " Gestión de Imagen Institucional y Donaciones" | manual | 4.88d | 2011-09-05 | 2011-09-09 | 34 |  |
| 36 | 1.2.7 | **Aceptación del Cliente de los Macroprocesos** |  | 4.75d | 2011-09-12 | 2011-09-16 | 33 | 0d |
| 37 | 1.2.7.1 | Macroproceso de Gestión de Recursos Humanos | manual | 4.88d | 2011-09-12 | 2011-09-16 |  |  |
| 38 | 1.2.7.2 | Macroproceso de Gestión de Educación Rural | manual | 4.88d | 2011-09-12 | 2011-09-16 |  |  |
| 39 | 1.2.8 | Modificación Procesos del Macroproceso " Gestión de Proyectos " | manual | 4.88d | 2011-09-12 | 2011-09-16 | 35 |  |
| 40 | 1.2.9 | **Inspección QA 2** |  | 9.88d | 2011-09-12 | 2011-09-23 |  |  |
| 41 | 1.2.9.1 | Procesos Modificados de "Planificación" y "Gestión de Imagen Institucional y Donaciones" | manual | 9.88d | 2011-09-12 | 2011-09-23 | 35 |  |
| 42 | 1.2.10 | Modificación Procesos del Macroproceso " Gestión de Aseguramiento de la Calidad" | manual | 4.88d | 2011-09-19 | 2011-09-23 | 39 |  |
| 43 | 1.2.11 | **Aceptación del Cliente de la Modificación de los Macroprocesos** |  | 4.75d | 2011-09-26 | 2011-09-30 | 41 | 0d |
| 44 | 1.2.11.1 | Macroproceso de Planificación | manual | 4.88d | 2011-09-26 | 2011-09-30 |  |  |
| 45 | 1.2.11.2 | Macroproceso de Gestión de Imagen Institucional y Donaciones | manual | 4.88d | 2011-09-26 | 2011-09-30 |  |  |
| 46 | 1.2.12 | Modificación Procesos del Macroproceso " Gestión de Orientación Pastoral " | manual | 4.88d | 2011-09-26 | 2011-09-30 | 42 |  |
| 47 | 1.2.13 | Entrega del Avance de la "Versión Final de la Memoria de Proyecto" y Perfil del Proyecto | manual | 0.88d | 2011-09-28 | 2011-09-28 |  |  |
| 48 | 1.2.14 | **Inspección QA 3** |  | 14.75d | 2011-10-03 | 2011-10-21 |  | 0d |
| 49 | 1.2.14.1 | Procesos Modificados de " Gestión de Proyectos " , " Gestión de Aseguramiento de la Calidad" y "Gestión de Orientación Pastoral" | manual | 14.88d | 2011-10-03 | 2011-10-21 | 46 |  |
| 50 | 1.2.15 | Actualización de la Arquitectura de Negocios | manual | 9.88d | 2011-10-03 | 2011-10-14 | 46 |  |
| 51 | 1.2.16 | Exposición del Avance de la "Versión Final de la Memoria" y Perfil del Proyecto | manual | 0.88d | 2011-10-10 | 2011-10-10 |  |  |
| 52 | 1.2.17 | Presentación de la Solicitud de Inscripción de Tema de Tesis | manual | 0.88d | 2011-10-17 | 2011-10-17 |  |  |
| 53 | 1.2.18 | Modificación RAM | manual | 2.88d | 2011-10-17 | 2011-10-19 | 50 |  |
| 54 | 1.2.19 | Modificación Stakeholders Empresariales | manual | 1.88d | 2011-10-20 | 2011-10-21 | 53 |  |

| ID | WBS | Task | Type | Duration | Start | Finish | Predecessors | Total slack | Free slack | Constraint |
| --- | --- | --- | --- | --- | --- | --- | --- | --- | --- | --- |
| 55 | 1.2.20 | **Aceptación del Cliente de la Modificación de los Macroprocesos** |  | 4.75d | 2011-10-24 | 2011-10-28 | 49 | 0d |  |  |
| 56 | 1.2.20.1 | Macroproceso de Gestión de Proyectos | manual | 4.88d | 2011-10-24 | 2011-10-28 |  |  |  |  |
| 57 | 1.2.20.2 | Macroproceso de Gestión de Aseguramiento de la Calidad | manual | 4.88d | 2011-10-24 | 2011-10-28 |  |  |  |  |
| 58 | 1.2.20.3 | Macroproceso de Gestión de Orientación Pastoral | manual | 4.88d | 2011-10-24 | 2011-10-28 |  |  |  |  |
| 59 | 1.2.21 | Modificación Modelo de Dominio | manual | 2.88d | 2011-10-24 | 2011-10-26 | 54 |  |  |  |
| 60 | 1.2.22 | **Inspección QA 4** |  | 9.75d | 2011-10-24 | 2011-11-04 |  | 0d |  |  |
| 61 | 1.2.22.1 | Arquitectura de Negocios Actualizada y RAM | manual | 9.88d | 2011-10-24 | 2011-11-04 | 49 |  |  |  |
| 62 | 1.2.23 | Modificación Reglas de Negocio | manual | 1d | 2011-10-27 | 2011-10-27 | 59 |  |  |  |
| 63 | 1.2.24 | Modificación Mapeo Entidad - Proceso | manual | 1d | 2011-10-28 | 2011-10-28 | 62 |  |  |  |
| 64 | 1.2.25 | Modificación de Priorizaciones de Procesos y Entidades | manual | 1d | 2011-10-31 | 2011-10-31 | 63 |  |  |  |
| 65 | 1.2.26 | Descomposición Funcional | manual | 3.88d | 2011-11-01 | 2011-11-04 | 64 |  |  |  |
| 66 | 1.2.27 | Presentación y Aceptación del Proyecto con Cliente |  | 1d | 2011-11-07 | 2011-11-07 | 65 | 10.12d | 0d | start no earlier than 2011-11-07 |
| 67 | 1.2.28 | Modificaciones finales tras Presentación con el Cliente | manual | 4.88d | 2011-11-08 | 2011-11-14 | 66 |  |  |  |
| 68 | 1.2.29 | Elaboración de la "Versión Final de la Memoria de Proyecto" | manual | 3.88d | 2011-11-15 | 2011-11-18 | 67 |  |  |  |
| 69 | 1.2.30 | Entrega de la "Versión Final de la Memoria de Proyecto" | manual | 0.88d | 2011-11-21 | 2011-11-21 | 68 |  |  |  |
| 70 | 1.2.31 | Sustentación del Proyecto | manual | 0.88d | 2011-12-05 | 2011-12-05 | 69 |  |  |  |
